Schedule from Primavera P6.

## Resources

| Resource | Group |
| --- | --- |
| Labour gang | labor |
| Excavator | equipment |
| Steel fixer | labor |
| Carpenter | labor |
| Mason | labor |
| Electrician | labor |
| Plumber | labor |
| Painter | labor |

## Schedule

| ID | Activity | Duration | Predecessors | Complete | Remaining | Resources | Cost | Actual cost |
| --- | --- | --- | --- | --- | --- | --- | --- | --- |
| A100 | Mobilisation | 10d |  | 100% |  | Labour gang [400 h] | 2,000,000 | 2,240,000 |
| A110 | Excavation | 20d | A100 | 100% |  | Excavator [160 h]; Labour gang [600 h] | 6,000,000 | 6,720,000 |
| A120 | Footings concrete | 25d | A110 | 100% |  | Steel fixer [900 h]; Carpenter [700 h]; Labour gang [800 h] | 14,000,000 | 15,680,000 |
| A130 | Columns ground floor | 20d | A120 | 4% | 19.25d | Steel fixer [700 h]; Carpenter [800 h] | 12,000,000 | 537,600 |
| A140 | Slab first floor | 25d | A130 |  |  | Steel fixer [1100 h]; Carpenter [1300 h]; Labour gang [900 h] | 18,000,000 |  |
| A150 | Columns first floor | 20d | A140 |  |  | Steel fixer [700 h]; Carpenter [800 h] | 12,000,000 |  |
| A160 | Roof slab | 25d | A150 |  |  | Steel fixer [1100 h]; Carpenter [1300 h]; Labour gang [900 h] | 18,000,000 |  |
| A170 | Masonry walls | 40d | A140 |  |  | Mason [2400 h]; Labour gang [1600 h] | 10,000,000 |  |
| A180 | Electrical first fix | 30d | A170 |  |  | Electrician [1200 h] | 8,000,000 |  |
| A190 | Plumbing first fix | 30d | A170 |  |  | Plumber [1100 h] | 7,000,000 |  |
| A200 | Plaster and finishes | 45d | A180, A190, A160 |  |  | Mason [2200 h]; Painter [1500 h]; Labour gang [1200 h] | 15,999,999 |  |
| A210 | External works | 30d | A160 |  |  | Labour gang [1400 h]; Excavator [120 h] | 6,000,000 |  |
| A220 | Handover | 0d | A200, A210 |  |  |  |  |  |
